# AQM to Production v0.1

Schedule from MS Project, 2021-07-21 to 2022-03-31, A marks actual dates.

## Calendars

- Standard: Mon-Fri 08:00-12:00, 13:00-17:00; Sat-Sun off.

## Resources

| Resource |
| --- |
| Shaun Rowe |
| April Tomlinson |
| Becky Collins |
| Jeni Gould |
| Stephen Gillmore |
| Stephen Gilmore |
| Felix Reta |
| Jay Familant |

## Schedule

| ID | WBS | Task | Type | Duration | Start | Finish | Predecessors | Complete | Remaining | Total slack | Free slack | Constraint | Resources | Work | Actual work |
| --- | --- | --- | --- | --- | --- | --- | --- | --- | --- | --- | --- | --- | --- | --- | --- |
| 1 | 1 | **Training** |  | 35d | 2021-10-04 A | 2021-11-19 |  | 58% | 14.54d | 0d |  |  |  | 729.6h | 417.6h |
| 2 | 1.1 | kickoff | manual | 1w | 2021-10-04 A | 2021-10-08 A |  | 100% |  |  |  |  | Felix Reta | 40h | 40h |
| 3 | 1.2 | **Knowledge xfer** |  | 30d | 2021-10-11 A | 2021-11-19 |  | 55% | 13.5d | 0d |  |  |  | 689.6h | 377.6h |
| 4 | 1.2.1 | CBT |  | 30d | 2021-10-11 A | 2021-11-19 | 2 | 60% | 12d | 0d |  |  | Shaun Rowe; Jay Familant | 449.6h | 257.6h |
| 5 | 1.2.2 | SmartGuide |  | 30d | 2021-10-11 A | 2021-11-19 | 2 | 50% | 15d | 0d |  |  | April Tomlinson | 240h | 120h |
| 6 | 2 | Verint ticket for drill down |  | 2mo | 2021-10-04 A | 2021-12-03 | 2 | 12% | 1.76mo | 0d |  |  |  |  |  |
| 7 | 3 | Verint ticket for low scoring volumes |  | 1mo | 2021-11-30 | 2021-12-27 |  |  |  | 68d |  | start no earlier than 2021-11-30 |  |  |  |
| 8 | 4 | **Call center rollout scheduling** |  | 5d | 2021-12-03 | 2021-12-10 | 3, 6 |  |  | -14.9d | 0d |  |  |  |  |
| 9 | 4.1 | Credit Risk |  | 1d | 2021-12-03 | 2021-12-06 | 3 |  |  | -10.9d | 0d |  |  |  |  |
| 10 | 4.2 | Card Services debit OFD |  | 1d | 2021-12-03 | 2021-12-06 | 3 |  |  | -10.9d | 0d |  |  |  |  |
| 11 | 4.3 | Card Services Debit OFS | milestone | 0d | 2021-12-03 | 2021-12-03 | 3 |  |  | -9.9d | 0d |  |  |  |  |
| 12 | 4.4 | Bank Services/Credit Services |  | 1d | 2021-12-03 | 2021-12-06 | 3 |  |  | -10.9d | 0d |  |  |  |  |
| 13 | 4.5 | ePay OFS |  | 1w | 2021-12-03 | 2021-12-10 | 3 |  |  | -14.9d | 0d |  |  |  |  |
| 14 | 4.6 | ePay OFD |  | 1d | 2021-12-03 | 2021-12-06 | 3 |  |  | -10.9d | 0d |  |  |  |  |
| 15 | 4.7 | Biller | milestone | 0d | 2021-12-03 | 2021-12-03 | 3 |  |  | -9.9d | 0d |  |  |  |  |
| 16 | 4.8 | Digital Channels OFS | milestone | 0d | 2021-12-03 | 2021-12-03 | 3 |  |  | -9.9d | 0d |  |  |  |  |
| 17 | 4.9 | Digital Channels OFD |  | 1d | 2021-12-03 | 2021-12-06 | 3 |  |  | -10.9d | 0d |  |  |  |  |
| 18 | 5 | **Agent enablement** |  | 1d | 2021-12-03 | 2021-12-06 | 3, 6 |  |  | -10.9d | 0d |  |  | 32h |  |
| 19 | 5.1 | Agent permissions |  | 1d | 2021-12-03 | 2021-12-06 |  |  |  | -10.9d | 0d |  | Becky Collins; Jeni Gould | 16h |  |
| 20 | 5.2 | Supervisor permissions |  | 1d | 2021-12-03 | 2021-12-06 |  |  |  | -10.9d | 0d |  | Becky Collins; Jeni Gould | 16h |  |
| 21 | 6 | **Execution** |  | 15.9d | 2021-11-22 | 2021-12-13 | 8, 18 |  |  | 0d |  |  |  | 16h |  |
| 22 | 6.1 | Perform access review |  | 1d | 2021-12-10 | 2021-12-13 | 8, 18 |  |  | 68.1d |  |  |  |  |  |
| 23 | 6.2 | Communicate AQM availabiltiy | manual | 2d | 2021-11-30 | 2021-12-01 | 4 |  |  |  |  |  | Stephen Gilmore | 16h |  |
| 24 | 6.3 | AQM CCO deployed | milestone, manual | 0d | 2021-12-01 | 2021-12-01 |  |  |  |  |  |  |  |  |  |
| 25 | 6.4 | Dashboards and reporting enhanced | milestone, manual | 0d | 2021-11-22 | 2021-11-22 |  |  |  |  |  |  | Felix Reta |  |  |

Notes:
- 5: Agents and Leadership
- 6: Issue surfaced during forms review by supervisors / Impacts final rollout
- 7: Identified on 11/30
- 8: Not site but LOB
- 9: Verint
- 10: Verint
- 11: A2G dependency
- 12: Verint
- 13: A2G dependency
- 14: Verint
- 15: A2G dependency
- 16: Verint
- 17: A2G dependency
- 22: Agents check, escalate to supervisor
- 25: Dependency on SDK-Datamart Clarity

| ID | WBS | Task | Type | Duration | Start | Finish | Predecessors | Total slack | Constraint |
| --- | --- | --- | --- | --- | --- | --- | --- | --- | --- |
| 26 | 7 | **Closing** |  | 10d | 2021-12-13 | 2021-12-27 | 21 | 68.1d |  |
| 27 | 7.1 | Lessons Learned |  | 2w | 2021-12-13 | 2021-12-27 |  | 68.1d |  |
| 28 | 8 | **A2G** |  | 182d? | 2021-07-21 | 2022-03-31 |  | 0d |  |
| 29 | 8.1 | Credit Risk (CCO) | manual | 67d? | 2021-07-31 | 2021-10-31 |  |  | start no earlier than 2021-07-31 |
| 30 | 8.2 | AP Credit Union Solutions(CUS) (non-CCO) | manual | 67d? | 2021-07-21 | 2021-10-21 |  |  | start no earlier than 2021-07-21 |
| 31 | 8.3 | Cards B2B (non-CCO) | manual | 67d? | 2021-07-25 | 2021-10-25 |  |  | start no earlier than 2021-07-25 |
| 32 | 8.4 | Card Services Debit (CCO) | manual | 67d? | 2021-09-30 | 2021-12-31 |  |  | start no earlier than 2021-09-30 |
| 33 | 8.5 | Bank Services/Credit Services (CCO) | manual | 67d? | 2021-09-30 | 2021-12-31 |  |  | start no earlier than 2021-09-30 |
| 34 | 8.6 | ePay (CCO /Non CCO) | manual | 67d? | 2021-08-30 | 2021-11-30 |  |  | start no earlier than 2021-08-30 |
| 35 | 8.7 | Biller (CCO) | manual | 67d? | 2021-08-30 | 2021-11-30 |  |  | start no earlier than 2021-08-30 |
| 36 | 8.8 | Digital Channels (CCO) | manual | 67d? | 2021-08-30 | 2021-11-30 |  |  | start no earlier than 2021-08-30 |
| 37 | 8.9 | AP Bank Solutions (BSG) (non-CCO) | manual | 67d? | 2021-08-08 | 2021-11-08 |  |  | start no earlier than 2021-08-08 |
| 38 | 8.10 | FRMS (non-CCO) | manual | 67d? | 2021-08-30 | 2021-11-30 |  |  | start no earlier than 2021-08-30 |
| 39 | 8.11 | AP Open Solutions (non-CCO) | manual | 65d? | 2021-12-31 | 2022-03-31 |  |  | start no earlier than 2021-12-31 |

Notes:
- 27: Include deployment LL
- 28: Just for reference as it is a prerequisite
